# caGrid-1-3

Schedule from MS Project, 2008-07-17 to 2008-07-30, A marks actual dates.
Personal

## Calendars

- Standard: Mon-Fri 08:00-12:00, 13:00-17:00; Sat-Sun off.

## Resources

| Resource |
| --- |
| Scott Oster |
| Steve Langella |
| Shannon Hastings |
| David Ervin |
| Santhosh Garmilla |
| Kunal Modi |
| John Eisenschmidt |

## Schedule

| ID | WBS | Task | Type | Duration | Start | Finish | Predecessors | Total slack | Free slack |
| --- | --- | --- | --- | --- | --- | --- | --- | --- | --- |
| 1 | 1.0 | **Gold Compatibility** |  | 1d? | 2008-07-17 | 2008-07-17 |  | 8d |  |
| 2 | 1.1 | **GME Rewrite** |  | 1d? | 2008-07-17 | 2008-07-17 |  | 8d |  |
| 3 | 1.1.0 | Start | milestone | 0d | 2008-07-17 | 2008-07-17 |  | 8d | 0d |
| 4 | 1.1.1 | MySQL 5.0 Support |  | 1d? | 2008-07-17 | 2008-07-17 | 3 | 8d | 0d |
| 5 | 1.1.3 | Schemas with Cycles |  | 1d? | 2008-07-17 | 2008-07-17 | 3 | 8d | 0d |
| 6 | 1.1.4 | Schemas with Includes/Redefines |  | 1d? | 2008-07-17 | 2008-07-17 | 3 | 8d | 0d |
| 7 | 1.1.5 | URI Valid as Namespace |  | 1d? | 2008-07-17 | 2008-07-17 | 3 | 8d | 0d |
| 8 | 1.1.6 | Metadata and WSDL reflect service operations |  | 1d? | 2008-07-17 | 2008-07-17 | 3 | 8d | 0d |
| 9 | 1.1.7 | Update/Delete non-production schemas |  | 1d? | 2008-07-17 | 2008-07-17 | 3 | 8d | 0d |
| 10 | 1.1.8 | Associate Arbitrarty Metadata or Annotations |  | 1d? | 2008-07-17 | 2008-07-17 | 3 | 8d | 0d |
| 11 | 1.1.9 | Validate that XML conforms to schema in GME |  | 1d? | 2008-07-17 | 2008-07-17 | 3 | 8d | 0d |
| 12 | 1.1.10 | Non-RFE Development |  | 1d? | 2008-07-17 | 2008-07-17 | 3 | 8d | 0d |
| 13 | 1.1.11 | Finish | milestone | 0d | 2008-07-17 | 2008-07-17 | 4, 5, 6, 7, 8, 9, 10, 11, 12 | 8d | 0d |
| 14 | 1.2 | **caDSR Grid Service Replacement** |  | 1d? | 2008-07-17 | 2008-07-17 |  | 8d |  |
| 15 | 1.2.1 | Start | milestone | 0d | 2008-07-17 | 2008-07-17 |  | 8d | 0d |
| 16 | 1.2.2 | Design |  | 1d? | 2008-07-17 | 2008-07-17 | 15 | 8d | 0d |
| 17 | 1.2.3 | Development |  | 1d? | 2008-07-17 | 2008-07-17 | 15 | 8d | 0d |
| 18 | 1.2.4 | Migration of code depenedencies on caDSR grid service (Introduce extensions) |  | 1d? | 2008-07-17 | 2008-07-17 |  | 9d |  |
| 19 | 1.2.4 | Developer Testing |  | 1d? | 2008-07-17 | 2008-07-17 | 15 | 8d | 0d |
| 20 | 1.2.5 | Finish | milestone | 0d | 2008-07-17 | 2008-07-17 | 16, 17, 19 | 8d | 0d |
| 21 | 1.3 | **Make Core Services Gold Compatible** |  | 1d? | 2008-07-17 | 2008-07-17 |  | 9d |  |
| 22 | 1.3.1 | Start | milestone | 0d | 2008-07-17 | 2008-07-17 |  | 9d | 0d |
| 23 | 1.3.2 | Identify Services to be made Gold Compatible |  | 1d? | 2008-07-17 | 2008-07-17 | 22 | 9d | 0d |
| 24 | 1.3.3 | Make Services Gold Compatible |  | 1d? | 2008-07-17 | 2008-07-17 | 22 | 9d | 0d |
| 25 | 1.3.4 | Finish | milestone | 0d | 2008-07-17 | 2008-07-17 | 23, 24 | 9d |  |

Notes:
- 18: This creates a backwards incompatibility for existing Introduce installations which would expect to be able to communicate with the existing caDSR grid service; we should leave this instance running, and deprecate it (if ncessary, we can create new versions of these extensions for past releases of Introduce if necessary.
- 21: caGrid 1.3 should focus on non-backwards compatibility issues (not refactoring service interfaces); I will create a detailed wbs for this sepecifically

| ID | WBS | Task | Type | Duration | Start | Finish | Predecessors | Total slack | Free slack |
| --- | --- | --- | --- | --- | --- | --- | --- | --- | --- |
| 26 | 1.4 | **Grid-based Policy Enforcement** |  | 1d? | 2008-07-17 | 2008-07-17 |  | 9d |  |
| 27 | 1.4.1 | Start | milestone | 0d | 2008-07-17 | 2008-07-17 |  | 9d | 0d |
| 28 | 1.4.2 | Determine Policy to be enforced |  | 1d? | 2008-07-17 | 2008-07-17 | 27 | 9d | 0d |
| 29 | 1.4.3 | Design |  | 1d? | 2008-07-17 | 2008-07-17 | 27 | 9d | 0d |
| 30 | 1.4.4 | Development |  | 1d? | 2008-07-17 | 2008-07-17 | 27 | 9d | 0d |
| 31 | 1.4.5 | End | milestone | 0d | 2008-07-17 | 2008-07-17 | 30, 28, 29 | 9d |  |
| 32 | 2.0 | **caCORE Integration** |  | 1d? | 2008-07-17 | 2008-07-17 |  | 9d |  |
| 33 | 2.1 | Start | milestone | 0d | 2008-07-17 | 2008-07-17 |  | 9d | 0d |
| 34 | 2.2 | Implementation of Common Testing between Grid and SDK |  | 1d? | 2008-07-17 | 2008-07-17 | 33 | 9d | 0d |
| 35 | 2.3 | Identify modeling gaps/requirements for the analytical/data service |  | 1d? | 2008-07-17 | 2008-07-17 | 33 | 9d | 0d |
| 36 | 2.4 | CQL/CQL2 Integration in SDK |  | 1d? | 2008-07-17 | 2008-07-17 | 33 | 9d | 0d |
| 37 | 2.5 | Data Service plug-in for SDK 4.1 |  | 1d? | 2008-07-17 | 2008-07-17 | 33 | 9d | 0d |
| 38 | 2.6 | Introduce upgrade to SDK 4.1 |  | 1d? | 2008-07-17 | 2008-07-17 | 33 | 9d | 0d |
| 39 | 2.7 | Proxy Framework and XML serialization integration in Grid Service |  | 1d? | 2008-07-17 | 2008-07-17 | 33 | 9d | 0d |
| 40 | 2.8 | XMI Reader API Integration in Introduce |  | 1d? | 2008-07-17 | 2008-07-17 | 33 | 9d | 0d |
| 41 | 2.9 | GME Namespace implementation in SDK |  | 1d? | 2008-07-17 | 2008-07-17 | 33 | 9d | 0d |
| 42 | 2.10 | Finish | milestone | 0d | 2008-07-17 | 2008-07-17 | 34, 35, 36, 41, 37, 38, 39, 40 | 9d |  |
| 43 | 3.0 | **Bug Fixes** |  | 1d? | 2008-07-17 | 2008-07-17 |  | 9d |  |
| 44 | 3.1 | Start | milestone | 0d | 2008-07-17 | 2008-07-17 |  | 9d | 0d |
| 45 | 3.2 | SDK 4 data service wizard fails with 'No Domain Model' |  | 1d? | 2008-07-17 | 2008-07-17 | 44 | 9d | 0d |
| 46 | 3.3 | When the trasfer resource is being destroyed it tries to delete the cache file. If the cache files does not exist it throws a resource exception. |  | 1d? | 2008-07-17 | 2008-07-17 | 44 | 9d | 0d |
| 47 | 3.4 | 2 >= 2 error in GridGrouper my groups |  | 1d? | 2008-07-17 | 2008-07-17 | 44 | 9d | 0d |
| 48 | 3.5 | Introduce is not passing any system properties on to it's ant calls it makes when running the engine. |  | 1d? | 2008-07-17 | 2008-07-17 | 44 | 9d | 0d |
| 49 | 3.6 | caDSR Grid Service API does not provide access to semantic metadata (concept codes) |  | 1d? | 2008-07-17 | 2008-07-17 | 44 | 9d | 0d |
| 50 | 3.7 | Security Service Metadata Anonymous Clients Ignored in Grid Grouper |  | 1d? | 2008-07-17 | 2008-07-17 | 44 | 9d | 0d |
| 51 | 3.8 | caCORE backed data services don't handle queries with single quotes in query parameters |  | 1d? | 2008-07-17 | 2008-07-17 | 44 | 9d | 0d |
| 52 | 3.9 | caDSR Type Browser doesn't let you correct a namespace that is invalid (as opposed to not found) |  | 1d? | 2008-07-17 | 2008-07-17 | 44 | 9d | 0d |
| 53 | 3.10 | DataService gets in inconsistent state and returns confusing errors when not properly initialized |  | 1d? | 2008-07-17 | 2008-07-17 | 44 | 9d | 0d |
| 54 | 3.11 | Grid Grouper Authorization not configured but service can be deployed |  | 1d? | 2008-07-17 | 2008-07-17 | 44 | 9d | 0d |
| 55 | 3.12 | Introduce error importing Type schemas it generated. |  | 1d? | 2008-07-17 | 2008-07-17 | 44 | 9d | 0d |
| 56 | 3.13 | GTS does not remove permissions when a CA is deleted. |  | 1d? | 2008-07-17 | 2008-07-17 | 44 | 9d | 0d |
| 57 | 3.14 | Spaces in GLOBUS_LOCATION causing errors on deployment for Introduce created services |  | 1d? | 2008-07-17 | 2008-07-17 | 44 | 9d | 0d |
| 58 | 3.15 | When importing a method from another introduce service package names are broken |  | 1d? | 2008-07-17 | 2008-07-17 | 44 | 9d | 0d |
| 59 | 3.16 | SyncGTS is an Introduce 1.1 service will conflict with a container running newer services. |  | 1d? | 2008-07-17 | 2008-07-17 | 44 | 9d | 0d |
| 60 | 3.17 | Lowercase chars in complexType names from schema can cause compile failure |  | 1d? | 2008-07-17 | 2008-07-17 | 44 | 9d | 0d |
| 61 | 3.18 | caGrid authentication service authentications fail after change of password on NCI LDAP |  | 1d? | 2008-07-17 | 2008-07-17 | 44 | 9d | 0d |
| 62 | 3.19 | SyncGTS is using log4j directly instead of commons logging which causes some logging statements to not be shown in Tomcat |  | 1d? | 2008-07-17 | 2008-07-17 | 44 | 9d | 0d |
| 63 | 3.20 | Remove references to log4j in projects and only use commons logging |  | 1d? | 2008-07-17 | 2008-07-17 | 44 | 9d | 0d |
| 64 | 3.21 | SDK 4 data service wizard fails with 'No Domain Model' |  | 1d? | 2008-07-17 | 2008-07-17 | 44 | 9d | 0d |
| 65 | 3.22 | Introduce error importing Type schemas it generated. |  | 1d? | 2008-07-17 | 2008-07-17 | 44 | 9d | 0d |
| 66 | 3.23 | Multiple services using WS-Enumeration cannot run in same container |  | 1d? | 2008-07-17 | 2008-07-17 | 44 | 9d | 0d |
| 67 | 3.24 | Introduce configure types validator lets you save when there are validation errors |  | 1d? | 2008-07-17 | 2008-07-17 | 44 | 9d | 0d |
| 68 | 3.25 | Subject in Dorian limited to 255 characters |  | 1d? | 2008-07-17 | 2008-07-17 | 44 | 9d | 0d |
| 69 | 3.26 | Introduce Log Viewer hangs in certain scenarios |  | 1d? | 2008-07-17 | 2008-07-17 | 44 | 9d | 0d |
| 70 | 3.27 | Finish | milestone | 0d | 2008-07-17 | 2008-07-17 | 45, 46, 47, 48, 49, 50, 51, 52, 53, 54, 55, 56, 57, 58, 59, 60, 61, 62, 63, 64, 65, 66, 67, 68, 69 | 9d |  |

Notes:
- 26: This is a risk item as we can't do anything until policy is defined, and there is no timeline for this, and its out of the caGrid team's control
- 39: This is a low priority and we might want to bump it
- 41: This doesn't represent any work for caGrid team
- 49: This is really a "missing feature" and should/would be satisfied be the new caDSR grid service / This is already referenced above in 1.2.2, just pointing it out explicitly.
- 51: I updated the tracker; this is a limitation which can't be fixed for caCORE SDK 3.1 and 3.2(.1), but was addressed in caGrid 1.2 when adding support for caCORE SDK 4.0. Should we close the bug?
- 60: This is something we can't fix; should we close the bug?

| ID | WBS | Task | Type | Duration | Start | Finish | Predecessors | Complete | Remaining | Total slack | Free slack |
| --- | --- | --- | --- | --- | --- | --- | --- | --- | --- | --- | --- |
| 71 | 4.0 | **WebSSO** |  | 1d? | 2008-07-17 A | 2008-07-17 |  | 42% | 0.58d? | 8d |  |
| 72 | 4.1 | Start | milestone | 0d | 2008-07-17 | 2008-07-17 |  |  |  | 8d | 0d |
| 73 | 4.2 | Properties not set for service redirect/cookie age within the cas-servlet.xml file |  | 1d? | 2008-07-17 A | 2008-07-17 A | 72 | 100% |  |  |  |
| 74 | 4.3 | CaGridWebSSOAttributeLoaderFilter will not work as designed |  | 1d? | 2008-07-17 A | 2008-07-17 A | 72 | 100% |  |  |  |
| 75 | 4.4 | WebSSO project is missing jar dependencies for syncGTS |  | 1d? | 2008-07-17 A | 2008-07-17 A | 72 | 100% |  |  |  |
| 76 | 4.5 | classnotfoundexception when deploying to tomcat 5.5+ |  | 1d? | 2008-07-17 A | 2008-07-17 A | 72 | 100% |  |  |  |
| 77 | 4.6 | Update Build Process |  | 1d? | 2008-07-17 | 2008-07-17 | 72 |  |  | 8d | 0d |
| 78 | 4.7 | Update the Sample Application |  | 1d? | 2008-07-17 | 2008-07-17 | 72 |  |  | 8d | 0d |
| 79 | 4.8 | Create an Installer |  | 1d? | 2008-07-17 | 2008-07-17 | 72 |  |  | 8d | 0d |
| 80 | 4.9 | Author System Tests for WebSSO |  | 1d? | 2008-07-17 | 2008-07-17 | 72 |  |  | 8d | 0d |
| 81 | 4.10 | Acegi client |  | 1d? | 2008-07-17 | 2008-07-17 | 72 |  |  | 8d | 0d |
| 82 | 4.11 | Single sign-out |  | 1d? | 2008-07-17 A | 2008-07-17 A | 72 | 100% |  |  |  |
| 83 | 4.12 | Support out-of-box integration with Liferay (caGrid Portal 2.x) |  | 1d? | 2008-07-17 | 2008-07-17 | 72 |  |  | 8d | 0d |
| 84 | 4.13 | Enhance existing documentation |  | 1d? | 2008-07-17 | 2008-07-17 | 72 |  |  | 8d | 0d |
| 85 | 4.14 | Finish | milestone | 0d | 2008-07-17 | 2008-07-17 | 74, 75, 76, 77, 78, 79, 80, 81, 82, 83, 84, 73 |  |  | 8d | 0d |
| 86 | 5.0 | **Continuous Integration** |  | 1d? | 2008-07-17 | 2008-07-17 |  |  |  | 8d |  |
| 87 | 5.1 | Start | milestone | 0d | 2008-07-17 | 2008-07-17 |  |  |  | 8d | 0d |
| 88 | 5.3 | Support common technology stack for caGrid infrastructure |  | 1d? | 2008-07-17 | 2008-07-17 | 87 |  |  | 9d | 0d |
| 89 | 5.3 | **Update installer** |  | 1d? | 2008-07-17 | 2008-07-17 |  |  |  | 9d |  |
| 90 | 5.3.1 | integrate latest portal release |  | 1d? | 2008-07-17 | 2008-07-17 |  |  |  | 9d |  |
| 91 | 5.3.2 | integrate WF client release? |  | 1d? | 2008-07-17 | 2008-07-17 |  |  |  | 9d |  |
| 92 | 5.3.3 | updates for tech stack (tomcat versions, etc) |  | 1d? | 2008-07-17 | 2008-07-17 |  |  |  | 9d |  |
| 94 | 5.4 | Replace cvs with subversion |  | 1d? | 2008-07-17 | 2008-07-17 | 87 |  |  | 8d | 0d |
| 95 | 5.5 | Common caBIG Ivy Repository |  | 1d? | 2008-07-17 | 2008-07-17 | 87 |  |  | 9d | 0d |
| 96 | 5.6 | Remove old EVS grid service |  | 1d? | 2008-07-17 | 2008-07-17 | 87 |  |  | 9d | 0d |
| 97 | 5.7 | Remove old caDSR grid service |  | 1d? | 2008-07-17 | 2008-07-17 | 87 |  |  | 9d | 0d |
| 98 | 5.8 | Finish | milestone | 0d | 2008-07-17 | 2008-07-17 | 88, 94, 97, 95, 96 |  |  | 9d |  |

Notes:
- 79: We should discuss the scope of this.

| ID | WBS | Task | Type | Duration | Start | Finish | Predecessors | Total slack | Free slack |
| --- | --- | --- | --- | --- | --- | --- | --- | --- | --- |
| 99 | 6.0 | **Data Services** |  | 1d? | 2008-07-17 | 2008-07-17 |  | 8d |  |
| 100 | 6.1 | Start | milestone | 0d | 2008-07-17 | 2008-07-17 |  | 8d | 0d |
| 101 | 6.2 | CQL/CQL2 Integration in SDK |  | 1d? | 2008-07-17 | 2008-07-17 | 100 | 8d | 0d |
| 102 | 6.3 | FQP should support delegation |  | 1d? | 2008-07-17 | 2008-07-17 | 100 | 8d | 0d |
| 103 | 6.4 | FQP should support BDT transfer of results |  | 1d? | 2008-07-17 | 2008-07-17 | 100 | 8d | 0d |
| 104 | 6.5 | FQP should support ws-notification |  | 1d? | 2008-07-17 | 2008-07-17 | 100 | 8d | 0d |
| 105 | 6.6 | DCQL fails when some target services are down |  | 1d? | 2008-07-17 | 2008-07-17 |  | 9d |  |
| 106 | 6.7 | DCQL (FQP) should support query modifiers |  | 1d? | 2008-07-17 | 2008-07-17 | 100 | 8d | 0d |
| 107 | 6.8 | Add additional utilities for working with query results |  | 1d? | 2008-07-17 | 2008-07-17 | 100 | 8d | 0d |
| 108 | 6.9 | silent exceptions (no service properties from custom query processor) when adding a custom query processor using Introduce data extension |  | 1d? | 2008-07-17 | 2008-07-17 | 100 | 8d | 0d |
| 109 | 6.10 | End | milestone | 0d | 2008-07-17 | 2008-07-17 | 101, 102, 103, 104, 106, 107, 108 | 8d | 0d |
| 110 | 7.0 | **Introduce** |  | 1d? | 2008-07-17 | 2008-07-17 |  | 2d |  |
| 111 | 7.1 | Start | milestone | 0d | 2008-07-17 | 2008-07-17 |  | 8d | 0d |
| 112 | 7.2 | Grid Grouper Introduce Authorization Extension |  | 1d? | 2008-07-17 | 2008-07-17 | 111 | 8d | 0d |
| 113 | 7.3 | CSM Introduce Authorization Extension |  | 1d? | 2008-07-17 | 2008-07-17 |  | 9d |  |
| 114 | 7.4 | ivy support for introduce-created projects |  | 1d? | 2008-07-17 | 2008-07-17 | 111 | 8d | 0d |
| 115 | 7.5 | Terminology Metadata Service Extension |  | 1d? | 2008-07-17 | 2008-07-17 | 111 | 8d | 0d |
| 116 | 7.2 | Need a way to hook in pre-deployment validation checks to enforce policy |  | 1d? | 2008-07-17 | 2008-07-17 | 111 | 8d | 0d |
| 117 | 7.7 | Change the way schemas are loaded and resolved by introduce. |  | 1d? | 2008-07-17 | 2008-07-17 | 111 | 8d | 0d |
| 118 | 7.8 | Introduce extension for creating cagrid core services |  | 1d? | 2008-07-17 | 2008-07-17 | 111 | 8d | 0d |
| 119 | 7.9 | Introduce Software Update needs re-engineered |  | 1d? | 2008-07-17 | 2008-07-17 | 111 | 8d | 0d |
| 120 | 7.10 | Improve Introduce usability when adding extensions or service contexts |  | 1d? | 2008-07-17 | 2008-07-17 | 111 | 8d | 0d |
| 121 | 7.11 | Introduce services which support persistence are hard to customize persistence on the resource itself |  | 1d? | 2008-07-17 | 2008-07-17 | 111 | 8d | 0d |
| 122 | 7.12 | Introduce client code should be more override friendly |  | 1d? | 2008-07-17 | 2008-07-17 | 111 | 8d | 0d |
| 123 | 7.13 | Introduce clients do not set user credential when returning client handle to stateful resources |  | 1d? | 2008-07-17 | 2008-07-17 | 111 | 8d | 0d |
| 124 | 7.14 | Introduce Service tab should use tooltips in the jtree |  | 1d? | 2008-07-17 | 2008-07-17 | 111 | 9d |  |
| 125 | 7.15 | Introduce Feature Freeze (milestone) |  | 1d? | 2008-07-17 | 2008-07-17 |  | 2d |  |
| 126 | 7.16 | Introduce Upgraders (1.1->1.3) |  | 1d? | 2008-07-17 | 2008-07-17 |  | 9d |  |
| 127 | 7.17 | Introduce Upgraders (1.2->1.3) |  | 1d? | 2008-07-17 | 2008-07-17 |  | 9d |  |
| 128 | 7.18 | Problem with Anonymous Security Setting |  | 1d? | 2008-07-17 | 2008-07-17 |  | 9d |  |
| 129 | 7.19 | Finish | milestone | 0d | 2008-07-17 | 2008-07-17 | 117, 118, 119, 120, 121, 122, 123, 112, 114, 116, 115 | 8d | 0d |

Notes:
- 106: We should hold off on this until CQL2 (and therefore DCQL2) are rolled out, as this requires a language change and would affect backwards compatibility
- 114: This is of limitied utility without 5.5; which likely won't be done in 1.3 timeline
- 115: We will need to discuss the design of this, and whether it is appropriate to be included in caGrid (or developed/released externally)

| ID | WBS | Task | Type | Duration | Start | Finish | Predecessors | Complete | Remaining | Total slack | Free slack |
| --- | --- | --- | --- | --- | --- | --- | --- | --- | --- | --- | --- |
| 130 | 8.0 | **Security** |  | 10d? | 2008-07-17 A | 2008-07-30 |  | 6% | 9.41d? | 0d |  |
| 131 | 8.1 | Start | milestone | 0d | 2008-07-17 | 2008-07-17 |  |  |  | 8d | 0d |
| 132 | 8.2 | Support multiple authentication profile |  | 1d? | 2008-07-17 | 2008-07-17 | 131 |  |  | 8d | 0d |
| 133 | 8.3 | Authentication Profile Service Metadata |  | 1d? | 2008-07-17 | 2008-07-17 | 131 |  |  | 8d | 0d |
| 134 | 8.4 | Update GAARDS UI to leverage new Authentication Profile / Trusted IdP metadata |  | 1d? | 2008-07-17 | 2008-07-17 | 131 |  |  | 8d | 0d |
| 135 | 8.5 | Develop system integration tests for the Authentication Service |  | 1d? | 2008-07-17 A | 2008-07-17 A | 131 | 100% |  |  |  |
| 136 | 8.6 | Develop system integration tests for the GTS |  | 1d? | 2008-07-18 | 2008-07-18 | 135 |  |  | 0d |  |
| 137 | 8.7 | SyncGTS needs to use service property for sync description |  | 1d? | 2008-07-21 | 2008-07-21 | 136 |  |  | 0d |  |
| 138 | 8.8 | API to discover trusted IDs (Use case for caB2B security requirements) |  | 1d? | 2008-07-22 | 2008-07-22 | 137 |  |  | 0d |  |
| 139 | 8.9 | Service Security Client needs a way to say to always use credential |  | 1d? | 2008-07-23 | 2008-07-23 | 138 |  |  | 0d |  |
| 140 | 8.10 | Spring enable Dorian |  | 1d? | 2008-07-24 | 2008-07-24 | 139 |  |  | 0d |  |
| 141 | 8.11 | Implement new Authentication Service interface |  | 1d? | 2008-07-25 | 2008-07-25 | 140 |  |  | 0d |  |
| 142 | 8.12 | Add Authentication Profile Metadata to Dorian. |  | 1d? | 2008-07-28 | 2008-07-28 | 141 |  |  | 0d |  |
| 143 | 8.13 | Extend Trusted Identity Provider information to include information regarding the IdP's Authentication Service |  | 1d? | 2008-07-29 | 2008-07-29 | 142 |  |  | 0d |  |
| 144 | 8.14 | Add Trusted IdP metadata to Dorian |  | 1d? | 2008-07-30 | 2008-07-30 | 143 |  |  | 0d |  |
| 145 | 8.15 | Move from issuing Proxy Certificates to Issuing short term certificates. |  | 1d? | 2008-07-17 | 2008-07-17 |  |  |  | 9d |  |
| 146 | 8.16 | Enable Dorian Host Certificates to work with new version of IE and Firefox |  | 1d? | 2008-07-17 | 2008-07-17 |  |  |  | 9d |  |
| 147 | 8.17 | Add Account Audting to Dorian |  | 1d? | 2008-07-17 | 2008-07-17 |  |  |  | 9d |  |
| 148 | 8.18 | Reformat GAARDS UI to display properly on the MAC |  | 1d? | 2008-07-17 | 2008-07-17 |  |  |  | 9d |  |
| 149 | 8.19 | End | milestone | 0d | 2008-07-17 | 2008-07-17 | 132, 133, 134 |  |  | 8d | 0d |
| 150 | 9.0 | **Incubation** |  | 1d? | 2008-07-17 | 2008-07-17 |  |  |  | 8d |  |
| 151 | 9.1 | Start | milestone | 0d | 2008-07-17 | 2008-07-17 |  |  |  | 8d | 0d |
| 152 | 9.2 | WSRF.NET (support) |  | 1d? | 2008-07-17 | 2008-07-17 | 151 |  |  | 8d | 0d |
| 153 | 9.2 | Identifiers (support) |  | 1d? | 2008-07-17 | 2008-07-17 | 151 |  |  | 8d | 0d |
| 154 | 9.3 | Metrics Service |  | 1d? | 2008-07-17 | 2008-07-17 | 151 |  |  | 8d | 0d |
| 155 | 9.0 | End | milestone | 0d | 2008-07-17 | 2008-07-17 | 152, 153, 154 |  |  | 9d |  |

| ID | WBS | Task | Type | Duration | Start | Finish | Predecessors | Total slack | Free slack |
| --- | --- | --- | --- | --- | --- | --- | --- | --- | --- |
| 156 | 10.0 | **Documentation** |  | 4d? | 2008-07-17 | 2008-07-22 |  | 6d |  |
| 157 | 10.1 | Start | milestone | 0d | 2008-07-17 | 2008-07-17 |  | 6d | 0d |
| 158 | 10.2 | Update Administrator Guide |  | 1d? | 2008-07-17 | 2008-07-17 | 157 | 9d | 3d |
| 159 | 10.3 | Update Install Guide |  | 1d? | 2008-07-17 | 2008-07-17 | 157 | 9d | 3d |
| 160 | 10.4 | Update User Guide |  | 1d? | 2008-07-17 | 2008-07-17 | 157 | 6d | 0d |
| 161 | 10.5 | Update design documents |  | 1d? | 2008-07-18 | 2008-07-18 | 160 | 6d | 0d |
| 162 | 10.6 | Update caGrid overview |  | 1d? | 2008-07-21 | 2008-07-21 | 161 | 6d | 0d |
| 163 | 10.7 | Update wiki |  | 1d? | 2008-07-22 | 2008-07-22 | 162 | 6d | 0d |
| 164 | 10.8 | Finish | milestone | 0d | 2008-07-22 | 2008-07-22 | 158, 159, 163 | 6d |  |
| 165 | 11.0 | **Quality Assurance** |  | 6d? | 2008-07-17 | 2008-07-24 |  | 4d |  |
| 166 | 11.1 | Start | milestone | 0d | 2008-07-17 | 2008-07-17 |  | 8d | 1d |
| 167 | 11.2 | Test GME |  | 1d? | 2008-07-18 | 2008-07-18 | 166, 13 | 8d |  |
| 168 | 11.3 | Test caDSR Replacement |  | 1d? | 2008-07-18 | 2008-07-18 | 166, 20 | 8d |  |
| 169 | 11.4 | Test WebSSO |  | 1d? | 2008-07-18 | 2008-07-18 | 166, 85 | 8d |  |
| 170 | 11.5 | Test release on new tech stack |  | 1d? | 2008-07-18 | 2008-07-18 | 166, 94 | 8d |  |
| 171 | 11.6 | Test Introduce |  | 1d? | 2008-07-18 | 2008-07-18 | 166, 129 | 8d |  |
| 172 | 11.7 | Test Security |  | 1d? | 2008-07-18 | 2008-07-18 | 166, 149 | 8d |  |
| 173 | 11.8 | Test WSRF.NET |  | 1d? | 2008-07-18 | 2008-07-18 | 166, 152 | 8d |  |
| 174 | 11.9 | Test Identifiers |  | 1d? | 2008-07-18 | 2008-07-18 | 166, 153 | 8d |  |
| 175 | 11.10 | Test Metrics |  | 1d? | 2008-07-18 | 2008-07-18 | 166, 154 | 8d |  |
| 176 | 11.11 | Test Data Services |  | 1d? | 2008-07-18 | 2008-07-18 | 166, 109 | 8d |  |
| 177 | 11.12 | Test caGrid 1.3 Grid Services |  | 1d? | 2008-07-23 | 2008-07-23 | 166, 189 | 4d | 0d |
| 178 | 11.13 | Test QA integration scenarios |  | 1d? | 2008-07-24 | 2008-07-24 | 177 | 4d | 0d |
| 179 | 11.14 | Finish | milestone | 0d | 2008-07-24 | 2008-07-24 | 178 | 4d |  |

| ID | WBS | Task | Type | Duration | Start | Finish | Predecessors | Total slack |
| --- | --- | --- | --- | --- | --- | --- | --- | --- |
| 180 | 12.0 | **Deployment** |  | 10d? | 2008-07-17 | 2008-07-30 |  | 0d |
| 181 | 12.1 | Start | milestone | 0d | 2008-07-17 | 2008-07-17 |  | 0d |
| 182 | 12.2 | Create release notes |  | 1d? | 2008-07-17 | 2008-07-17 | 181 | 0d |
| 183 | 12.3 | Create 1.3 target_grid configurations |  | 1d? | 2008-07-18 | 2008-07-18 | 182 | 0d |
| 184 | 12.4 | **Create 1.3 release branch in CVS** |  | 1d? | 2008-07-21 | 2008-07-21 | 183 | 0d |
| 185 | 12.4.1 | Update project versions |  | 1d? | 2008-07-21 | 2008-07-21 |  | 0d |
| 186 | 12.4.2 | update eclipse projects |  | 1d? | 2008-07-21 | 2008-07-21 |  | 7d |
| 187 | 12.4.3 | remove any projects which wont be released in 1.3 |  | 1d? | 2008-07-21 | 2008-07-21 |  | 7d |
| 188 | 12.5 | Update LICENSE |  | 1d? | 2008-07-17 | 2008-07-17 |  | 9d |
| 189 | 12.6 | Update core caGrid Services using Introduce 1.3 |  | 1d? | 2008-07-22 | 2008-07-22 | 125, 185 | 0d |
| 190 | 12.7 | Validate core services' metadata |  | 1d? | 2008-07-17 | 2008-07-17 |  | 9d |
| 191 | 12.8 | publish release IVY repositories |  | 1d? | 2008-07-17 | 2008-07-17 |  | 9d |
| 192 | 12.9 | create installer release |  | 1d? | 2008-07-17 | 2008-07-17 |  | 9d |
| 193 | 12.10 | post installer properties file to FTP site |  | 1d? | 2008-07-17 | 2008-07-17 |  | 9d |
| 194 | 12.11 | create gforge release |  | 1d? | 2008-07-17 | 2008-07-17 |  | 9d |
| 195 | 12.12 | Write Deployment Instructions |  | 1d? | 2008-07-17 | 2008-07-17 | 181 | 3d |
| 196 | 12.13 | Workflow Service in Release |  | 1d? | 2008-07-17 | 2008-07-17 | 181 | 3d |
| 197 | 12.14 | Portal in Release |  | 1d? | 2008-07-17 | 2008-07-17 | 181 | 9d |
| 198 | 12.15 | Create Release |  | 1d? | 2008-07-23 | 2008-07-23 | 181, 189, 195, 196 | 0d |
| 199 | 12.16 | Package Release into Installer |  | 1d? | 2008-07-24 | 2008-07-24 | 198 | 0d |
| 200 | 12.17 | Redeploy QA Grid |  | 1d? | 2008-07-25 | 2008-07-25 | 199 | 0d |
| 201 | 12.18 | Redeploy Training Grid |  | 1d? | 2008-07-25 | 2008-07-25 | 199 | 3d |
| 202 | 12.19 | Redeploy Staging Grid |  | 1d? | 2008-07-28 | 2008-07-28 | 200 | 0d |
| 203 | 12.20 | Redeploy Production Grid |  | 1d? | 2008-07-29 | 2008-07-29 | 202 | 0d |
| 204 | 12.21 | Update Zope / Plome |  | 1d? | 2008-07-24 | 2008-07-24 | 198 | 4d |
| 205 | 12.22 | Update gforge |  | 1d? | 2008-07-24 | 2008-07-24 | 198 | 4d |
| 206 | 12.23 | Send Release Announcement |  | 1d? | 2008-07-30 | 2008-07-30 | 203 | 0d |
| 207 | 12.24 | Finish | milestone | 0d | 2008-07-30 | 2008-07-30 | 189, 195, 196, 197, 198, 199, 200, 201, 202, 203, 204, 205, 206 | 0d |

Notes:
- 201: In the past, we have deployed the training grid before other tiers, as we develop the deployment process document in doing so
